# LR1

How a schedule from MS Project changed from version to version. A marks actual dates.

## Version 1 (saved 2024-03-04)

Note of the change: eds

| ID | WBS | Task | Duration | Start | Finish | Predecessors | Total float |
| --- | --- | --- | --- | --- | --- | --- | --- |
| 1 |  | Начало проекта | 0w | 2024-03-01 | 2024-03-01 |  | 70d |
| 2 | 2 | **Создание интерфейса** | 110d | 2024-03-01 | 2024-08-12 | 1 | 0d |
| 3 | 2.1 | **Разработка дизайна интерфейса** | 25d | 2024-03-01 | 2024-04-08 |  | 70d |
| 4 |  | Разработка 2D графических элементов | 3w | 2024-03-01 | 2024-03-25 |  | 70d |
| 5 |  | Разработка 3D графических элементов | 2w | 2024-03-01 | 2024-03-18 | 4SS | 70d |
| 6 |  | Создание заставки | 3w | 2024-03-18 | 2024-04-08 | 5 | 70d |
| 7 |  | Программирование интерфейса | 3w | 2024-07-22 | 2024-08-12 | 3, 12 | 0d |
| 8 | 3 | **Построение базы объектов** | 85d | 2024-03-01 | 2024-07-08 |  | 53d |
| 9 |  | Анализ и построение структуры базы объектов | 2w | 2024-03-01 | 2024-03-18 |  | 53d |
| 10 |  | Программирование средств обработки базы объектов | 3w | 2024-03-18 | 2024-04-08 | 9 | 53d |
| 11 |  | Наполнение базы объектов | 12w | 2024-04-08 | 2024-07-08 | 10 | 53d |
| 12 | 4 | **Создание ядра GIS** | 95d | 2024-03-01 | 2024-07-22 |  | 0d |
| 13 |  | Анализ и проектирование ядра | 3w | 2024-03-01 | 2024-03-25 |  | 0d |
| 14 |  | Создание модели ядра | 5w | 2024-03-25 | 2024-04-27 | 13 | 0d |
| 15 |  | Тестирование модели ядра | 1w | 2024-04-27 | 2024-05-08 | 14 | 0d |
| 16 |  | Создание рабочей версии ядра | 10w | 2024-05-08 | 2024-07-22 | 15 | 0d |
| 17 |  | Создание мультимедиа – наполнения | 6w | 2024-04-08 | 2024-05-24 | 3 | 83d |
| 18 |  | Создание справочной системы | 2w | 2024-08-12 | 2024-08-26 | 7 | 18d |
| 19 | 7 | **Создание руководства пользователя** | 17d | 2024-07-29 | 2024-08-21 | 7FS-10d | 0d |
| 20 |  | Разработка дизайна руководства | 1w | 2024-07-29 | 2024-08-05 |  | 0d |
| 21 |  | Написание руководства пользователя | 3w | 2024-07-31 | 2024-08-21 | 20SS+2d | 0d |
| 22 | 8 | **Создание web – сайта и поддержка** | 21d | 2024-07-31 | 2024-08-29 |  | 0d |
| 23 |  | Разработка структуры сайта | 1d | 2024-07-31 | 2024-08-01 | 21SS | 0d |
| 24 |  | Разработка дизайна сайта | 1w | 2024-08-01 | 2024-08-08 | 23 | 0d |
| 25 |  | Наполнение сайта | 3w | 2024-08-08 | 2024-08-29 | 24 | 0d |
| 26 |  | Тестирование сайта | 4w | 2024-08-22 | 2024-09-19 | 22FS-1w | 0d |
| 27 |  | Сдача сайта в эксплуатацию | 0w | 2024-09-19 | 2024-09-19 | 26 | 0d |

## Version 2 (saved 2024-03-05)

Note of the change: s

Last finish stays 2024-09-19.

Changed:

| ID | Task | Other |
| --- | --- | --- |
| 1 | Начало проекта | baseline start none → 2024-03-01; baseline finish none → 2024-03-01 |
| 2 | **Создание интерфейса** | baseline start none → 2024-03-01; baseline finish none → 2024-08-12 |
| 3 | **Разработка дизайна интерфейса** | baseline start none → 2024-03-01; baseline finish none → 2024-04-08 |
| 4 | Разработка 2D графических элементов | baseline start none → 2024-03-01; baseline finish none → 2024-03-25 |
| 5 | Разработка 3D графических элементов | baseline start none → 2024-03-01; baseline finish none → 2024-03-18 |
| 6 | Создание заставки | baseline start none → 2024-03-18; baseline finish none → 2024-04-08 |
| 7 | Программирование интерфейса | baseline start none → 2024-07-22; baseline finish none → 2024-08-12 |
| 8 | **Построение базы объектов** | baseline start none → 2024-03-01; baseline finish none → 2024-07-08 |
| 9 | Анализ и построение структуры базы объектов | baseline start none → 2024-03-01; baseline finish none → 2024-03-18 |
| 10 | Программирование средств обработки базы объектов | baseline start none → 2024-03-18; baseline finish none → 2024-04-08 |
| 11 | Наполнение базы объектов | baseline start none → 2024-04-08; baseline finish none → 2024-07-08 |
| 12 | **Создание ядра GIS** | baseline start none → 2024-03-01; baseline finish none → 2024-07-22 |
| 13 | Анализ и проектирование ядра | baseline start none → 2024-03-01; baseline finish none → 2024-03-25 |
| 14 | Создание модели ядра | baseline start none → 2024-03-25; baseline finish none → 2024-04-27 |
| 15 | Тестирование модели ядра | baseline start none → 2024-04-27; baseline finish none → 2024-05-08 |
| 16 | Создание рабочей версии ядра | baseline start none → 2024-05-08; baseline finish none → 2024-07-22 |
| 17 | Создание мультимедиа – наполнения | baseline start none → 2024-04-08; baseline finish none → 2024-05-24 |
| 18 | Создание справочной системы | baseline start none → 2024-08-12; baseline finish none → 2024-08-26 |
| 19 | **Создание руководства пользователя** | baseline start none → 2024-07-29; baseline finish none → 2024-08-21 |
| 20 | Разработка дизайна руководства | baseline start none → 2024-07-29; baseline finish none → 2024-08-05 |
| 21 | Написание руководства пользователя | baseline start none → 2024-07-31; baseline finish none → 2024-08-21 |
| 22 | **Создание web – сайта и поддержка** | baseline start none → 2024-07-31; baseline finish none → 2024-08-29 |
| 23 | Разработка структуры сайта | baseline start none → 2024-07-31; baseline finish none → 2024-08-01 |
| 24 | Разработка дизайна сайта | baseline start none → 2024-08-01; baseline finish none → 2024-08-08 |
| 25 | Наполнение сайта | baseline start none → 2024-08-08; baseline finish none → 2024-08-29 |
| 26 | Тестирование сайта | baseline start none → 2024-08-22; baseline finish none → 2024-09-19 |
| 27 | Сдача сайта в эксплуатацию | baseline start none → 2024-09-19; baseline finish none → 2024-09-19 |
