# LR1

How a schedule from MS Project changed from version to version. A marks actual dates.

## Version 1 (data date 2024-04-26, saved 2024-03-18, file 1.mpp)

Note of the change: s

| ID | WBS | Task | Duration | Start | Finish | Predecessors | Complete | Total float | Constraint |
| --- | --- | --- | --- | --- | --- | --- | --- | --- | --- |
| 1 |  | Начало проекта | 0w | 2024-03-01 09:00 A | 2024-03-01 09:00 A |  | 100% |  |  |
| 2 | 2 | **Создание интерфейса** | 92.89d | 2024-03-01 09:00 A | 2024-07-18 11:08 | 1 | 86% | 0d |  |
| 3 | 2.1 | **Разработка дизайна интерфейса** | 35.75d | 2024-03-01 09:00 A | 2024-04-22 18:00 A |  | 100% |  |  |
| 4 |  | Разработка 2D графических элементов | 3w | 2024-03-01 09:00 A | 2024-03-25 14:00 A |  | 100% |  |  |
| 5 |  | Разработка 3D графических элементов | 2w | 2024-03-08 09:00 A | 2024-03-25 11:00 A | 4SS | 100% |  |  |
| 6 |  | Создание заставки | 4.05w | 2024-03-25 11:00 A | 2024-04-22 18:00 A | 5 | 100% |  |  |
| 7 |  | Программирование интерфейса | 1.5w | 2024-07-08 16:08 | 2024-07-18 11:08 | 3, 12 |  | 0d |  |
| 8 | 3 | **Построение базы объектов** | 61.85d | 2024-03-25 14:00 A | 2024-06-26 14:47 |  | 41% | 35.82d |  |
| 9 |  | Анализ и построение структуры базы объектов | 2w | 2024-03-25 14:00 A | 2024-04-08 16:00 A |  | 100% |  |  |
| 10 |  | Программирование средств обработки базы объектов | 2.7w | 2024-04-08 16:00 A | 2024-05-14 13:47 | 9 | 89% | 35.82d |  |
| 11 |  | Наполнение базы объектов | 6w | 2024-05-14 13:47 | 2024-06-26 14:47 | 10 |  | 35.82d |  |
| 12 | 4 | **Создание ядра GIS** | 85.39d | 2024-03-01 09:00 A | 2024-07-08 16:08 |  | 40% | 0d |  |
| 13 |  | Анализ и проектирование ядра | 4.95w | 2024-03-01 09:00 A | 2024-04-22 16:00 A |  | 100% |  |  |
| 14 |  | Создание модели ядра | 2.47w | 2024-04-22 16:00 A | 2024-05-20 08:47 | 13 | 33% | 0d |  |
| 15 |  | Тестирование модели ядра | 1w | 2024-05-20 08:47 | 2024-05-27 08:47 | 14 |  | 0d |  |
| 16 |  | Создание рабочей версии ядра | 5.93w | 2024-05-27 08:47 | 2024-07-08 16:08 | 15 |  | 0d |  |
| 17 |  | Создание мультимедиа – наполнения | 6w | 2024-04-23 08:00 A | 2024-06-13 09:00 | 3 | 13% | 45.42d |  |
| 18 |  | Создание справочной системы | 2w | 2024-07-30 09:08 | 2024-08-13 16:08 | 7 |  | 1.65d |  |
| 19 | 7 | **Создание руководства пользователя** | 23.12d | 2024-07-04 11:08 | 2024-08-06 13:08 | 7FS-10d |  | 0d |  |
| 20 |  | Разработка дизайна руководства | 1w | 2024-07-04 11:08 | 2024-07-25 15:08 |  |  | 0d |  |
| 21 |  | Написание руководства пользователя | 3w | 2024-07-08 11:08 | 2024-08-06 13:08 | 20SS+2d |  | 0d |  |
| 22 | 8 | **Создание web – сайта и поддержка** | 24.38d | 2024-07-08 11:08 | 2024-08-09 15:08 |  |  | 0d |  |
| 23 |  | Разработка структуры сайта | 1d | 2024-07-08 11:08 | 2024-07-09 11:08 | 21SS |  | 0d |  |
| 24 |  | Разработка дизайна сайта | 1.35w | 2024-07-09 11:08 | 2024-07-18 14:08 | 23 |  | 0d |  |
| 25 |  | Наполнение сайта | 3w | 2024-07-18 14:08 | 2024-08-09 15:08 | 24 |  | 0d |  |
| 26 |  | Тестирование сайта | 1.75w | 2024-08-02 15:08 | 2024-08-15 13:20 | 22FS-1w |  | 0d |  |
| 27 |  | Сдача сайта в эксплуатацию | 0w | 2024-08-15 13:20 | 2024-08-15 13:20 | 26 |  | 0d |  |
| 28 | 11 | **Совещание** | 104.62d | 2024-03-06 09:00 A | 2024-08-07 18:00 |  | 35% |  |  |
| 29 |  | Совещание 1 | 1h | 2024-03-06 09:00 A | 2024-03-06 10:00 A |  | 100% |  | start no earlier than 2024-03-06 09:00 |
| 30 |  | Совещание 2 | 1h | 2024-03-13 09:00 A | 2024-03-13 10:00 A |  | 100% |  | start no earlier than 2024-03-13 09:00 |
| 31 |  | Совещание 3 | 1h | 2024-03-20 09:00 A | 2024-03-20 10:00 A |  | 100% |  | start no earlier than 2024-03-20 09:00 |
| 32 |  | Совещание 4 | 1h | 2024-03-27 09:00 A | 2024-03-27 10:00 A |  | 100% |  | start no earlier than 2024-03-27 09:00 |
| 33 |  | Совещание 5 | 1h | 2024-04-03 09:00 A | 2024-04-03 10:00 A |  | 100% |  | start no earlier than 2024-04-03 09:00 |
| 34 |  | Совещание 6 | 1h | 2024-04-10 09:00 A | 2024-04-10 10:00 A |  | 100% |  | start no earlier than 2024-04-10 09:00 |
| 35 |  | Совещание 7 | 1h | 2024-04-17 09:00 A | 2024-04-17 10:00 A |  | 100% |  | start no earlier than 2024-04-17 09:00 |
| 36 |  | Совещание 8 | 1h | 2024-04-24 09:00 A | 2024-04-24 10:00 A |  | 100% |  | start no earlier than 2024-04-24 09:00 |
| 37 |  | Совещание 9 | 1h | 2024-05-02 08:00 | 2024-05-02 09:00 |  |  |  | start no earlier than 2024-05-01 09:00 |
| 38 |  | Совещание 10 | 1h | 2024-05-08 09:00 | 2024-05-08 10:00 |  |  |  | start no earlier than 2024-05-08 09:00 |
| 39 |  | Совещание 11 | 1h | 2024-05-15 09:00 | 2024-05-15 10:00 |  |  |  | start no earlier than 2024-05-15 09:00 |
| 40 |  | Совещание 12 | 1h | 2024-05-22 09:00 | 2024-05-22 10:00 |  |  |  | start no earlier than 2024-05-22 09:00 |
| 41 |  | Совещание 13 | 1h | 2024-05-29 09:00 | 2024-05-29 10:00 |  |  |  | start no earlier than 2024-05-29 09:00 |
| 42 |  | Совещание 14 | 1h | 2024-06-05 09:00 | 2024-06-05 10:00 |  |  |  | start no earlier than 2024-06-05 09:00 |
| 43 |  | Совещание 15 | 1h | 2024-06-13 08:00 | 2024-06-13 09:00 |  |  |  | start no earlier than 2024-06-12 09:00 |
| 44 |  | Совещание 16 | 1h | 2024-06-19 09:00 | 2024-06-19 10:00 |  |  |  | start no earlier than 2024-06-19 09:00 |
| 45 |  | Совещание 17 | 1h | 2024-06-26 09:00 | 2024-06-26 10:00 |  |  |  | start no earlier than 2024-06-26 09:00 |
| 46 |  | Совещание 18 | 1h | 2024-07-03 09:00 | 2024-07-03 10:00 |  |  |  | start no earlier than 2024-07-03 09:00 |
| 47 |  | Совещание 19 | 1h | 2024-07-10 09:00 | 2024-07-10 10:00 |  |  |  | start no earlier than 2024-07-10 09:00 |
| 48 |  | Совещание 20 | 1h | 2024-07-17 09:00 | 2024-07-17 10:00 |  |  |  | start no earlier than 2024-07-17 09:00 |
| 49 |  | Совещание 21 | 1h | 2024-07-24 09:00 | 2024-07-24 10:00 |  |  |  | start no earlier than 2024-07-24 09:00 |
| 50 |  | Совещание 22 | 1h | 2024-07-31 09:00 | 2024-07-31 10:00 |  |  |  | start no earlier than 2024-07-31 09:00 |
| 51 |  | Совещание 23 | 1h | 2024-08-07 09:00 | 2024-08-07 10:00 |  |  |  | start no earlier than 2024-08-07 09:00 |

## Version 2 (saved 2024-03-25, file 2.mpp)

Note of the change: s

Last finish 2024-08-15 → 2024-09-30 (+46d). Complete tasks 14 → 0.

Added:

| ID | Task | Duration | Start | Finish | Predecessors | Constraint |
| --- | --- | --- | --- | --- | --- | --- |
| 2 | **Анализ и проектирование** | 35d | 2024-03-01 | 2024-04-22 |  |  |
| 7 | **Разработка** | 132d | 2024-03-06 | 2024-09-16 |  |  |
| 8 | **Создание web-сайта** | 132d | 2024-03-06 | 2024-09-16 | 1 |  |
| 14 | **Построение базы объектов** | 75d | 2024-05-15 | 2024-08-29 |  |  |
| 20 | **Тестирование** | 107d | 2024-04-01 | 2024-09-04 |  |  |
| 23 | **Поддержка** | 145d | 2024-03-01 | 2024-09-30 |  |  |
| 26 | Создание руководства пользователя | 1d | 2024-09-02 | 2024-09-03 | 12FS-10d | start no earlier than 2024-07-29 |

Removed: 2 Создание интерфейса; 3 Разработка дизайна интерфейса; 19 Создание руководства пользователя; 22 Создание web – сайта и поддержка; 28 Совещание; 29 Совещание 1; 30 Совещание 2; 31 Совещание 3; 32 Совещание 4; 33 Совещание 5; 34 Совещание 6; 35 Совещание 7; 36 Совещание 8; 37 Совещание 9; 38 Совещание 10; 39 Совещание 11; 40 Совещание 12; 41 Совещание 13; 42 Совещание 14; 43 Совещание 15; 44 Совещание 16; 45 Совещание 17; 46 Совещание 18; 47 Совещание 19; 48 Совещание 20; 49 Совещание 21; 50 Совещание 22; 51 Совещание 23

Changed:

| ID | Task | Start | Finish | Duration | Complete | Total float | Predecessors | Other |
| --- | --- | --- | --- | --- | --- | --- | --- | --- |
| 1 | Начало проекта | 2024-03-01 09:00 A → 2024-03-01 | 2024-03-01 09:00 A → 2024-03-01 |  | 100% → 0% | none → 21d |  | baseline start 2024-03-01 09:00 → 2024-03-01; baseline finish 2024-03-01 09:00 → 2024-03-01 |
| 3 | **Построение базы объектов** | 2024-03-25 14:00 A → 2024-03-01 (-24d) | 2024-06-26 14:47 → 2024-03-18 (-100d) | 61.85d → 10d | 41% → 0% | 35.82d → 60d |  | resources Сервер → none; baseline start 2024-03-25 14:00 → none; baseline finish 2024-06-18 09:00 → none |
| 4 | Анализ и построение структуры базы объектов | 2024-03-25 14:00 A → 2024-03-01 (-24d) | 2024-04-08 16:00 A → 2024-03-18 (-21d) |  | 100% → 0% | none → 60d |  | constraint none → start no earlier than 2024-03-01; baseline start 2024-03-25 14:00 → 2024-03-01; baseline finish 2024-04-08 16:00 → 2024-03-18 |
| 5 | Анализ и проектирование ядра | 2024-03-01 09:00 A → 2024-03-01 | 2024-04-22 16:00 A → 2024-04-22 | 4.95w → 5.4w | 100% → 0% | none → 0d |  | baseline start 2024-03-01 09:00 → 2024-03-01; baseline finish 2024-03-25 14:00 → 2024-03-25 |
| 6 | Разработка структуры сайта | 2024-07-08 11:08 → 2024-03-05 (-125d) | 2024-07-09 11:08 → 2024-03-06 (-125d) |  |  | 0d → 18d |  | constraint none → start no earlier than 2024-03-05; baseline start 2024-06-18 08:33 → 2024-07-31; baseline finish 2024-06-19 08:33 → 2024-08-01 |
| 9 | Разработка 2D графических элементов | 2024-03-01 09:00 A → 2024-03-14 (+13d) | 2024-03-25 14:00 A → 2024-04-04 (+10d) |  | 100% → 0% | none → 82d |  | baseline start 2024-03-01 09:00 → 2024-03-01; baseline finish 2024-03-25 14:00 → 2024-03-25 |
| 10 | Разработка 3D графических элементов | 2024-03-08 09:00 A → 2024-03-14 (+6d) | 2024-03-25 11:00 A → 2024-03-28 (+3d) |  | 100% → 0% | none → 82d |  | baseline start 2024-03-01 09:00 → 2024-03-01; baseline finish 2024-03-18 12:00 → 2024-03-18 |
| 11 | Создание заставки | 2024-03-25 11:00 A → 2024-03-28 (+3d) | 2024-04-22 18:00 A → 2024-04-18 (-4d) | 4.05w → 3w | 100% → 0% | none → 82d |  | baseline start 2024-03-18 13:00 → 2024-03-18; baseline finish 2024-04-08 16:00 → 2024-04-08 |
| 12 | Программирование интерфейса | 2024-07-08 16:08 → 2024-08-26 (+49d) | 2024-07-18 11:08 → 2024-09-16 (+60d) | 1.5w → 3w |  |  | Разработка дизайна интерфейса, 17 → 17 | constraint none → start no earlier than 2024-07-22; resources Программист 3; Программист 4; Программист 2; Программист 1 (замена) → Программист 3; Программист 4; baseline start 2024-06-18 13:33 → 2024-07-22; baseline finish 2024-06-28 08:33 → 2024-08-12 |
| 13 | Разработка дизайна сайта | 2024-07-09 11:08 → 2024-03-06 (-125d) | 2024-07-18 14:08 → 2024-04-08 (-101d) | 1.35w → 1.4w |  | 0d → 18d |  | baseline start 2024-06-19 08:33 → 2024-08-01; baseline finish 2024-06-28 09:33 → 2024-08-08 |
| 15 | Программирование средств обработки базы объектов | 2024-04-08 16:00 A → 2024-05-15 (+37d) | 2024-05-14 13:47 → 2024-06-05 (+22d) | 2.7w → 3w | 89% → 0% | 35.82d → 22.25d |  | constraint none → start no earlier than 2024-05-15; resources Программист 3; Программист 4; Программист 1 (замена); Программист 2 → Программист 3; Программист 4; baseline start 2024-04-08 16:00 → 2024-03-18; baseline finish 2024-04-27 17:00 → 2024-04-08 |
| 16 | Наполнение базы объектов | 2024-05-14 13:47 → 2024-06-05 (+22d) | 2024-06-26 14:47 → 2024-08-29 (+64d) | 6w → 12w |  | 35.82d → 22.25d |  | constraint none → start no earlier than 2024-04-01; resources Наборщик данных 1; Наборщик данных 2; Наборщик данных 3; Наборщик данных 4; Наборщик данных 5; Наборщик данных 6; Наборщик данных 7; Наборщик данных 8; Наборщик данных 9; Наборщик данных 10 → Наборщик данных 1; Наборщик данных 2; Наборщик данных 3; Наборщик данных 4; Наборщик данных 5; baseline start 2024-04-27 17:00 → 2024-04-08; baseline finish 2024-06-18 09:00 → 2024-07-08 |
| 17 | **Создание ядра GIS** | 2024-03-01 09:00 A → 2024-04-27 (+57d) | 2024-07-08 16:08 → 2024-08-26 (+49d) | 85.39d → 80d | 40% → 0% |  |  | baseline start 2024-03-01 09:00 → 2024-03-01; baseline finish 2024-06-18 13:33 → 2024-07-22 |
| 18 | Создание модели ядра | 2024-04-22 16:00 A → 2024-04-27 (+5d) | 2024-05-20 08:47 → 2024-06-07 (+18d) | 2.47w → 5w | 33% → 0% |  |  | constraint none → start no earlier than 2024-03-25; resources Ведущий программист; Программист 2; Программист 3; Программист 4; Программист 1 (замена) → Ведущий программист; Программист 1; baseline start 2024-03-25 14:00 → 2024-03-25; baseline finish 2024-04-08 14:49 → 2024-04-27 |
| 19 | Создание рабочей версии ядра | 2024-05-27 08:47 → 2024-06-17 (+21d) | 2024-07-08 16:08 → 2024-08-26 (+49d) | 5.93w → 10w |  |  |  | constraint none → start no earlier than 2024-05-08; resources Ведущий программист; Программист 2; Программист 3; Программист 4; Программист 1 (замена); Программист 5; Программист 6 → Ведущий программист; Программист 1; Программист 2; baseline start 2024-04-15 14:49 → 2024-05-08; baseline finish 2024-06-18 13:33 → 2024-07-22 |
| 21 | Тестирование модели ядра | 2024-05-20 08:47 → 2024-06-07 (+18d) | 2024-05-27 08:47 → 2024-06-17 (+21d) |  |  |  |  | constraint none → start no earlier than 2024-04-27; resources Программист 1 (замена) → Программист 1; baseline start 2024-04-08 14:49 → 2024-04-27; baseline finish 2024-04-15 14:49 → 2024-05-08 |
| 22 | Тестирование сайта | 2024-08-02 15:08 → 2024-04-01 (-123d) | 2024-08-15 13:20 → 2024-09-04 (+20d) | 1.75w → 6.4w |  | 0d → 18d | Создание web – сайта и поддержкаFS-1w → 13FS-1w | constraint none → start no earlier than 2024-03-06; resources Ведущий программист; Программист 2; Программист 1 (замена); Программист 3; Программист 4; Программист 5; Программист 6 → Ведущий программист; Программист 1; Программист 2; baseline start 2024-07-12 16:33 → 2024-08-22; baseline finish 2024-08-12 15:33 → 2024-09-19 |
| 24 | Создание мультимедиа – наполнения | 2024-04-23 08:00 A → 2024-04-18 (-5d) | 2024-06-13 09:00 → 2024-06-05 (-8d) |  | 13% → 0% | 45.42d → 82d | Разработка дизайна интерфейса → 11, 9, 10 | constraint none → start no earlier than 2024-04-08; baseline start 2024-04-08 16:00 → 2024-04-08; baseline finish 2024-05-27 16:00 → 2024-05-24 |
| 25 | Разработка дизайна руководства | 2024-07-04 11:08 → 2024-03-01 (-125d) | 2024-07-25 15:08 → 2024-03-11 (-136d) |  |  | 0d → 18d |  | baseline start 2024-06-14 08:33 → 2024-07-29; baseline finish 2024-07-05 10:33 → 2024-08-05 |
| 27 | Создание справочной системы | 2024-07-30 09:08 → 2024-09-16 (+48d) | 2024-08-13 16:08 → 2024-09-30 (+48d) |  |  | 1.65d → 0d |  | constraint none → start no earlier than 2024-08-12; baseline start 2024-07-10 08:00 → 2024-08-12; baseline finish 2024-07-24 12:00 → 2024-08-26 |
| 28 | Написание руководства пользователя | 2024-07-08 11:08 → 2024-03-05 (-125d) | 2024-08-06 13:08 → 2024-04-10 (-118d) |  |  | 0d → 18d |  | baseline start 2024-06-18 08:33 → 2024-07-31; baseline finish 2024-07-09 15:33 → 2024-08-21 |
| 29 | Наполнение сайта | 2024-07-18 14:08 → 2024-04-08 (-101d) | 2024-08-09 15:08 → 2024-04-27 (-104d) |  |  | 0d → 105d |  | constraint none → start no earlier than 2024-03-14; baseline start 2024-06-28 09:33 → 2024-08-08; baseline finish 2024-07-19 16:33 → 2024-08-29 |
| 30 | Сдача сайта в эксплуатацию | 2024-08-15 13:20 → 2024-09-04 (+20d) | 2024-08-15 13:20 → 2024-09-04 (+20d) |  |  | 0d → 18d |  | baseline start 2024-08-12 15:33 → 2024-09-19; baseline finish 2024-08-12 15:33 → 2024-09-19 |

## Version 3 (saved 2024-03-25, file 3.mpp)

Note of the change: s

Last finish 2024-09-30 → 2025-01-22 (+114d).

Added:

| ID | Task | Duration | Start | Finish |
| --- | --- | --- | --- | --- |
| 7 | **Разработка дизайна** | 62d | 2024-03-04 | 2024-06-05 |
| 15 | **Программирование** | 95d | 2024-04-22 | 2024-09-09 |
| 22 | **Построение базы объектов** | 60d | 2024-06-05 | 2024-08-29 |

Changed:

| ID | Task | Start | Finish | Duration | Total float | Predecessors | Other |
| --- | --- | --- | --- | --- | --- | --- | --- |
| 1 | Начало проекта |  |  |  | 21d → 0d |  | constraint none → start no earlier than 2024-03-01 |
| 2 | **Анализ и проектирование** |  |  |  |  | none → 1 |  |
| 6 | Разработка структуры сайта | 2024-03-05 → 2024-03-01 (-4d) | 2024-03-06 → 2024-03-04 (-2d) |  | 18d → 87d | 31SS → none | constraint start no earlier than 2024-03-05 → start no earlier than 2024-03-01 |
| 8 | Разработка дизайна сайта | 2024-03-06 → 2024-03-04 (-2d) | 2024-04-08 → 2024-04-04 (-4d) |  | 18d → 87d |  |  |
| 9 | **Разработка дизайна интерфейса** | 2024-03-06 → 2024-03-14 (+8d) | 2024-09-16 → 2024-04-18 (-151d) | 132d → 25d | 0d → 162d | 1 → none | was named Создание web-сайта |
| 13 | Создание мультимедиа – наполнения |  |  |  | 82d → 164d | 12, 10, 11 → 9 |  |
| 14 | **Разработка** | 2024-03-06 → 2024-04-22 (+47d) | 2024-09-16 → 2024-09-09 (-7d) | 132d → 95d | 10d → 0d |  |  |
| 16 | **Построение базы объектов** |  | 2024-08-29 → 2024-06-05 (-85d) | 75d → 15d | 22.25d → 104.25d |  |  |
| 18 | Создание модели ядра | 2024-04-27 → 2024-04-22 (-5d) | 2024-06-07 → 2024-05-31 (-7d) |  |  |  |  |
| 19 | Создание рабочей версии ядра | 2024-06-17 → 2024-06-07 (-10d) | 2024-08-26 → 2024-08-19 (-7d) |  |  | 26 → 26, 18 |  |
| 20 | Программирование интерфейса | 2024-08-26 → 2024-08-19 (-7d) | 2024-09-16 → 2024-09-09 (-7d) |  | 0d → 80d | 21 → 9, 19 |  |
| 21 | **Наполнение** | 2024-04-27 → 2024-06-05 (+39d) | 2024-08-26 → 2024-09-02 (+7d) | 80d → 62.25d | 0d → 47.25d |  | was named Создание ядра GIS |
| 24 | Наполнение сайта | 2024-04-08 → 2024-08-12 (+126d) | 2024-04-27 → 2024-09-02 (+128d) |  | 105d → 0d | 8 → 8, 19FS-1w |  |
| 25 | **Тестирование** | 2024-04-01 → 2024-05-31 (+60d) | 2024-09-04 → 2025-01-22 (+140d) | 107d → 167d | 18d → 0d |  |  |
| 26 | Тестирование модели ядра | 2024-06-07 → 2024-05-31 (-7d) | 2024-06-17 → 2024-06-07 (-10d) |  |  |  |  |
| 27 | Тестирование сайта | 2024-04-01 → 2024-08-26 (+147d) | 2024-09-04 → 2025-01-22 (+140d) |  | 18d → 0d | 8FS-1w → 24FS-1w |  |
| 28 | **Документирование** | 2024-03-01 → 2024-08-26 (+178d) | 2024-09-30 → 2024-10-02 (+2d) | 145d → 27d | 0d → 80d |  | was named Поддержка |
| 29 | **Создание руководства пользователя** | 2024-09-02 → 2024-08-26 (-7d) | 2024-09-03 → 2024-10-02 (+29d) | 1d → 27d | 19d → 80d |  | constraint start no earlier than 2024-07-29 → none |
| 30 | Разработка дизайна руководства | 2024-03-01 → 2024-08-26 (+178d) | 2024-03-11 → 2024-09-30 (+203d) | 1w → 5w | 18d → 80d |  |  |
| 31 | Написание руководства пользователя | 2024-03-05 → 2024-08-28 (+176d) | 2024-04-10 → 2024-10-02 (+175d) |  | 18d → 80d |  |  |
| 32 | Создание справочной системы | 2024-09-16 → 2024-09-09 (-7d) | 2024-09-30 → 2024-09-23 (-7d) |  | 0d → 87d |  |  |
| 33 | Сдача сайта в эксплуатацию | 2024-09-04 → 2025-01-22 (+140d) | 2024-09-04 → 2025-01-22 (+140d) |  | 18d → 0d | 27 → 27, 28 |  |

## Version 4 (saved 2024-04-08, file 3.mpp)

Note of the change: s

Last finish 2025-01-22 → 2024-08-26 (-149d).

Added:

| ID | Task | Duration | Start | Finish | Predecessors | Resources |
| --- | --- | --- | --- | --- | --- | --- |
| 6 | **Создание web-сайта** | 110d | 2024-03-01 | 2024-08-12 | 1 |  |
| 11 | Разработка структур сайта | 1d | 2024-03-05 | 2024-03-05 | 27SS | Web-дизайнер |
| 16 | **Создание ядра GIS** | 80d | 2024-03-25 | 2024-07-22 |  |  |
| 23 | Создание мультимеди - наполнения | 6w | 2024-04-08 | 2024-05-23 | 9, 7, 8 | Мультимедиа-корреспондент |
| 25 | Создание руководства пользователя | 1d | 2024-07-29 | 2024-07-30 | 10FS-10d |  |

Removed: 6 Разработка структуры сайта; 7 Разработка дизайна; 9 Разработка дизайна интерфейса; 13 Создание мультимедиа – наполнения; 15 Программирование; 16 Построение базы объектов; 21 Наполнение; 22 Построение базы объектов; 28 Документирование

Changed:

| ID | Task | Start | Finish | Duration | Total float | Predecessors | Other |
| --- | --- | --- | --- | --- | --- | --- | --- |
| 1 | Начало проекта |  |  |  | 0d → 65d |  | constraint start no earlier than 2024-03-01 → none; baseline start 2024-03-01 → none; baseline finish 2024-03-01 → none |
| 2 | **Анализ и проектирование** |  | 2024-04-22 → 2024-03-22 (-31d) | 35d → 15d |  | 1 → none |  |
| 3 | Анализ и построение структуры базы объектов |  | 2024-03-18 → 2024-03-15 (-3d) |  | 142d → 40d |  | constraint start no earlier than 2024-03-01 → none; baseline start 2024-03-01 → none; baseline finish 2024-03-18 → none |
| 4 | Анализ и проектирование ядра |  | 2024-04-22 → 2024-03-22 (-31d) | 5.4w → 3w |  |  | resources Системный аналитик; Ведущий программист → Ведущий программиист; Системный аналитик; baseline start 2024-03-01 → none; baseline finish 2024-03-25 → none |
| 5 | **Разработка** | 2024-04-22 → 2024-03-01 (-52d) | 2024-09-09 → 2024-08-12 (-28d) | 95d → 110d | 0d → 10d |  |  |
| 7 | Разработка 2D графических элементов | 2024-03-14 → 2024-03-01 (-13d) | 2024-04-04 → 2024-03-22 (-13d) |  | 162d → 65d |  | baseline start 2024-03-01 → none; baseline finish 2024-03-25 → none |
| 8 | Разработка 3D графических элементов | 2024-03-14 → 2024-03-01 (-13d) | 2024-03-28 → 2024-03-15 (-13d) |  | 162d → 65d |  | baseline start 2024-03-01 → none; baseline finish 2024-03-18 → none |
| 9 | Создание заставки | 2024-03-28 → 2024-03-18 (-10d) | 2024-04-18 → 2024-04-05 (-13d) |  | 162d → 65d |  | baseline start 2024-03-18 → none; baseline finish 2024-04-08 → none |
| 10 | Программирование интерфейса | 2024-08-19 → 2024-07-22 (-28d) | 2024-09-09 → 2024-08-12 (-28d) |  | 80d → 0d | Разработка дизайна интерфейса, 18 → 16 | constraint start no earlier than 2024-07-22 → none; baseline start 2024-07-22 → none; baseline finish 2024-08-12 → none |
| 12 | Разработка дизайна сайта | 2024-03-04 → 2024-03-06 (+2d) | 2024-04-04 → 2024-03-13 (-22d) | 1.4w → 1w | 87d → 97d | Разработка структуры сайта → 11 | resources Web-дизайнер; Художник-дизайнер; 3D аниматор → 3D аниматор; Web-дизайнер; Художник-дизайнер; baseline start 2024-08-01 → none; baseline finish 2024-08-08 → none |
| 13 | **Построение базы объектов** | 2024-03-01 → 2024-03-15 (+14d) | 2024-03-18 → 2024-07-01 (+105d) | 10d → 70d | 142d → 40d |  | resources none → Аренда сервера |
| 14 | Программирование средств обработки базы объектов | 2024-05-15 → 2024-03-15 (-61d) | 2024-06-05 → 2024-03-29 (-68d) | 3w → 3.8w | 104.25d → 40d |  | constraint start no earlier than 2024-05-15 → none; resources Программист 3; Программист 4 → Программист 3; Программист 4; Аренда сервера; baseline start 2024-03-18 → none; baseline finish 2024-04-08 → none |
| 15 | Наполнение базы объектов | 2024-06-05 → 2024-04-01 (-65d) | 2024-08-29 → 2024-07-01 (-59d) |  | 104.25d → 40d |  | constraint start no earlier than 2024-04-01 → none; baseline start 2024-04-08 → none; baseline finish 2024-07-08 → none |
| 17 | Создание модели ядра | 2024-04-22 → 2024-03-25 (-28d) | 2024-05-31 → 2024-04-26 (-35d) |  |  |  | constraint start no earlier than 2024-03-25 → none; resources Ведущий программист; Программист 1 → Ведущий программиист; Программист 1; baseline start 2024-03-25 → none; baseline finish 2024-04-27 → none |
| 18 | Создание рабочей версии ядра | 2024-06-07 → 2024-05-08 (-30d) | 2024-08-19 → 2024-07-22 (-28d) |  |  | 20, 17 → 20 | constraint start no earlier than 2024-05-08 → none; resources Ведущий программист; Программист 1; Программист 2 → Ведущий программиист; Программист 1; Программист 2; baseline start 2024-05-08 → none; baseline finish 2024-07-22 → none |
| 19 | **Тестирование** | 2024-05-31 → 2024-03-06 (-86d) | 2025-01-22 → 2024-05-07 (-260d) | 167d → 42d | 0d → 37d |  |  |
| 20 | Тестирование модели ядра | 2024-05-31 → 2024-04-27 (-34d) | 2024-06-07 → 2024-05-07 (-31d) |  |  |  | constraint start no earlier than 2024-04-27 → none; baseline start 2024-04-27 → none; baseline finish 2024-05-08 → none |
| 21 | Тестирование сайта | 2024-08-26 → 2024-03-06 (-173d) | 2025-01-22 → 2024-04-03 (-294d) | 6.4w → 4w | 0d → 97d | 28FS-1w → 12FS-1w | constraint start no earlier than 2024-03-06 → none; resources Ведущий программист; Программист 1; Программист 2 → Ведущий программиист; Программист 1; Программист 2; baseline start 2024-08-22 → none; baseline finish 2024-09-19 → none |
| 22 | **Поддержка** | 2024-08-26 → 2024-03-01 (-178d) | 2024-10-02 → 2024-08-26 (-37d) | 27d → 120d | 80d → 0d | 10FS-10d → none | was named Создание руководства пользователя |
| 24 | Разработка дизайна руководства | 2024-08-26 → 2024-03-01 (-178d) | 2024-09-30 → 2024-03-07 (-207d) | 5w → 1w | 80d → 97d |  | baseline start 2024-07-29 → none; baseline finish 2024-08-05 → none |
| 26 | Создание справочной системы | 2024-09-09 → 2024-08-12 (-28d) | 2024-09-23 → 2024-08-26 (-28d) |  | 87d → 0d |  | constraint start no earlier than 2024-08-12 → none; baseline start 2024-08-12 → none; baseline finish 2024-08-26 → none |
| 27 | Написание руководства пользователя | 2024-08-28 → 2024-03-05 (-176d) | 2024-10-02 → 2024-03-26 (-190d) |  | 80d → 97d |  | baseline start 2024-07-31 → none; baseline finish 2024-08-21 → none |
| 28 | Наполнение сайта | 2024-08-12 → 2024-03-14 (-151d) | 2024-09-02 → 2024-04-03 (-152d) |  | 0d → 97d | 12, 18FS-1w → 12 | constraint start no earlier than 2024-03-14 → none; baseline start 2024-08-08 → none; baseline finish 2024-08-29 → none |
| 29 | Сдача сайта в эксплуатацию | 2025-01-22 → 2024-04-03 (-294d) | 2025-01-22 → 2024-04-03 (-294d) | 0w → 0d | 0d → 97d | 21, Документирование → 21 | baseline start 2024-09-19 → none; baseline finish 2024-09-19 → none |

## Version 5 (saved 2024-04-14, file decomp.mpp)

Note of the change: s

Last finish 2024-08-26 → 2024-07-22 (-35d).

Added:

| ID | Task | Duration | Start | Finish | Predecessors | Resources |
| --- | --- | --- | --- | --- | --- | --- |
| 6 | Разработка структуры сайта | 1d | 2024-03-01 | 2024-03-04 |  | Web-дизайнер |
| 7 | **Разработка дизайна** | 55d | 2024-03-01 | 2024-05-24 |  |  |
| 13 | Создание мультимедиа – наполнения | 6w | 2024-04-08 | 2024-05-24 | 9 | Мультимедиа-корреспондент |
| 15 | **Программирование** | 65d | 2024-03-25 | 2024-07-01 |  |  |
| 16 | **Построение базы объектов** | 15d | 2024-04-08 | 2024-04-27 |  |  |
| 21 | **Наполнение** | 40d | 2024-04-27 | 2024-07-01 |  |  |
| 22 | **Построение базы объектов** | 30d | 2024-04-27 | 2024-06-17 |  |  |
| 28 | **Документирование** | 20d | 2024-06-17 | 2024-07-15 |  |  |

Removed: 11 Разработка структур сайта; 16 Создание ядра GIS; 23 Создание мультимеди - наполнения; 25 Создание руководства пользователя

Changed:

| ID | Task | Start | Finish | Duration | Total float | Predecessors | Other |
| --- | --- | --- | --- | --- | --- | --- | --- |
| 1 | Начало проекта |  |  |  | 65d → 0d |  | baseline start none → 2024-03-01; baseline finish none → 2024-03-01 |
| 2 | **Анализ и проектирование** |  | 2024-03-22 → 2024-04-08 (+17d) | 15d → 25d |  | none → 1 |  |
| 3 | **Построение базы объектов** | 2024-03-15 → 2024-03-25 (+10d) | 2024-07-01 → 2024-04-08 (-84d) | 70d → 10d | 40d → 25d |  | resources Аренда сервера → Сервер; baseline start none → 2024-03-01; baseline finish none → 2024-07-08 |
| 4 | Анализ и построение структуры базы объектов | 2024-03-01 → 2024-03-25 (+24d) | 2024-03-15 → 2024-04-08 (+24d) |  | 40d → 25d |  | baseline start none → 2024-03-01; baseline finish none → 2024-03-18 |
| 5 | Анализ и проектирование ядра |  | 2024-03-22 → 2024-03-25 (+3d) |  |  |  | resources Ведущий программиист; Системный аналитик → Системный аналитик; Ведущий программист; baseline start none → 2024-03-01; baseline finish none → 2024-03-25 |
| 8 | Разработка дизайна сайта | 2024-03-06 → 2024-03-04 (-2d) | 2024-03-13 → 2024-03-12 (-1d) |  | 97d → 59d | Разработка структур сайта → 6 | resources 3D аниматор; Web-дизайнер; Художник-дизайнер → Web-дизайнер; Художник-дизайнер; 3D аниматор; baseline start none → 2024-08-01; baseline finish none → 2024-08-08 |
| 9 | **Разработка дизайна интерфейса** |  | 2024-08-12 → 2024-04-08 (-126d) | 110d → 25d | 0d → 40d | 1 → none | was named Создание web-сайта; baseline start none → 2024-03-01; baseline finish none → 2024-04-08 |
| 10 | Разработка 2D графических элементов |  | 2024-03-22 → 2024-03-25 (+3d) |  | 65d → 40d |  | baseline start none → 2024-03-01; baseline finish none → 2024-03-25 |
| 11 | Разработка 3D графических элементов |  | 2024-03-15 → 2024-03-18 (+3d) |  | 65d → 40d |  | baseline start none → 2024-03-01; baseline finish none → 2024-03-18 |
| 12 | Создание заставки |  | 2024-04-05 → 2024-04-08 (+3d) |  | 65d → 40d |  | baseline start none → 2024-03-18; baseline finish none → 2024-04-08 |
| 14 | **Разработка** | 2024-03-01 → 2024-03-25 (+24d) | 2024-08-12 → 2024-07-01 (-42d) | 110d → 65d | 10d → 0d |  |  |
| 17 | Программирование средств обработки базы объектов | 2024-03-15 → 2024-04-08 (+24d) | 2024-03-29 → 2024-04-27 (+29d) | 3.8w → 3w | 40d → 25d |  | resources Программист 3; Программист 4; Аренда сервера → Программист 3; Программист 4; baseline start none → 2024-03-18; baseline finish none → 2024-04-08 |
| 18 | Создание модели ядра |  | 2024-04-26 → 2024-04-08 (-18d) | 5w → 2w |  |  | resources Ведущий программиист; Программист 1 → Ведущий программист; Программист 1; baseline start none → 2024-03-25; baseline finish none → 2024-04-27 |
| 19 | Создание рабочей версии ядра | 2024-05-08 → 2024-04-15 (-23d) | 2024-07-22 → 2024-06-17 (-35d) | 10w → 8w |  | 26 → 26, 18 | resources Ведущий программиист; Программист 1; Программист 2 → Ведущий программист; Программист 1; Программист 2; baseline start none → 2024-05-08; baseline finish none → 2024-07-22 |
| 20 | Программирование интерфейса | 2024-07-22 → 2024-06-17 (-35d) | 2024-08-12 → 2024-07-01 (-42d) | 3w → 2w | 0d → 5d | Создание ядра GIS → 9, 19 | baseline start none → 2024-07-22; baseline finish none → 2024-08-12 |
| 23 | Наполнение базы объектов | 2024-04-01 → 2024-04-27 (+26d) | 2024-07-01 → 2024-06-17 (-14d) | 12w → 6w | 40d → 25d |  | baseline start none → 2024-04-08; baseline finish none → 2024-07-08 |
| 24 | Наполнение сайта | 2024-03-14 → 2024-06-07 (+85d) | 2024-04-03 → 2024-07-01 (+89d) |  | 97d → 0d | 8 → 8, 19FS-1w | baseline start none → 2024-08-08; baseline finish none → 2024-08-29 |
| 25 | **Тестирование** | 2024-03-06 → 2024-04-08 (+33d) | 2024-05-07 → 2024-07-22 (+76d) | 42d → 70d | 37d → 0d |  |  |
| 26 | Тестирование модели ядра | 2024-04-27 → 2024-04-08 (-19d) | 2024-05-07 → 2024-04-15 (-22d) |  |  |  | baseline start none → 2024-04-27; baseline finish none → 2024-05-08 |
| 27 | Тестирование сайта | 2024-03-06 → 2024-06-24 (+110d) | 2024-04-03 → 2024-07-22 (+110d) |  | 97d → 0d | 8FS-1w → 24FS-1w | resources Ведущий программиист; Программист 1; Программист 2 → Ведущий программист; Программист 1; Программист 2; baseline start none → 2024-08-22; baseline finish none → 2024-09-19 |
| 29 | **Создание руководства пользователя** | 2024-03-01 → 2024-06-17 (+108d) | 2024-08-26 → 2024-07-10 (-47d) | 120d → 17d | 0d → 8d | none → 20FS-10d | was named Поддержка |
| 30 | Разработка дизайна руководства | 2024-03-01 → 2024-06-17 (+108d) | 2024-03-07 → 2024-07-08 (+123d) | 1w → 3w | 97d → 8d |  | baseline start none → 2024-07-29; baseline finish none → 2024-08-05 |
| 31 | Написание руководства пользователя | 2024-03-05 → 2024-06-19 (+106d) | 2024-03-26 → 2024-07-10 (+106d) |  | 97d → 8d |  | baseline start none → 2024-07-31; baseline finish none → 2024-08-21 |
| 32 | Создание справочной системы | 2024-08-12 → 2024-07-01 (-42d) | 2024-08-26 → 2024-07-15 (-42d) |  | 0d → 5d |  | baseline start none → 2024-08-12; baseline finish none → 2024-08-26 |
| 33 | Сдача сайта в эксплуатацию | 2024-04-03 → 2024-07-22 (+110d) | 2024-04-03 → 2024-07-22 (+110d) | 0d → 0w | 97d → 0d | 27 → 27, 28 | baseline start none → 2024-09-19; baseline finish none → 2024-09-19 |
